# Cronograma

Schedule from MS Project, 2020-01-20 to 2020-04-16, costs in $, A marks actual dates.

## Calendars

- Estándar: Mon-Fri 09:00-13:00, 15:00-19:00; Sat-Sun off.

## Resources

| Resource | Cost per use |
| --- | --- |
| Cervantes Moreno Christian Andres | 100 |
| Flores Altamirano Edgar | 100 |
| López Rivera Aiko | 100 |
| López Sánchez Gustavo Andrés | 100 |

## Schedule

| ID | WBS | Task | Duration | Start | Finish | Predecessors | Complete | Remaining | Total slack | Free slack | Constraint | Resources | Work | Actual work | Cost | Actual cost |
| --- | --- | --- | --- | --- | --- | --- | --- | --- | --- | --- | --- | --- | --- | --- | --- | --- |
| 1 | 1 | **Proyecto** | 64d | 2020-01-20 A | 2020-04-16 |  | 4% | 61.58d | 0d |  |  |  | 2544h | 144h | 21,300 | 1,200 |
| 2 | 1.1 | **Capacitación en Angular** | 6d | 2020-01-20 | 2020-01-27 |  |  |  | 2d | 0d |  |  | 160h |  | 2,000 |  |
| 3 | 1.1.1 | Sintaxis de typescript | 1d | 2020-01-20 | 2020-01-20 |  |  |  | 3d | 0d |  | López Sánchez Gustavo Andrés; Flores Altamirano Edgar | 16h |  | 200 |  |
| 4 | 1.1.2 | Tipos de dato, funciones | 1d | 2020-01-20 | 2020-01-20 |  |  |  | 3d | 0d |  | López Sánchez Gustavo Andrés; Flores Altamirano Edgar | 16h |  | 200 |  |
| 5 | 1.1.3 | Uso de herencia e implementación | 1d | 2020-01-21 | 2020-01-21 | 4, 3 |  |  | 3d | 1d |  | López Sánchez Gustavo Andrés; Flores Altamirano Edgar | 16h |  | 200 |  |
| 6 | 1.1.4 | Uso de CLI Angular (Comandos para creación dinámica) | 1d | 2020-01-23 | 2020-01-23 | 5 |  |  | 4d |  | start no earlier than 2020-01-23 | López Sánchez Gustavo Andrés; Flores Altamirano Edgar | 16h |  | 200 |  |
| 7 | 1.1.5 | Creación y uso de componentes | 1d | 2020-01-23 | 2020-01-23 | 5 |  |  | 2d | 0d | start no earlier than 2020-01-23 | López Sánchez Gustavo Andrés; Flores Altamirano Edgar | 16h |  | 200 |  |
| 8 | 1.1.6 | Ciclo de vida de los componentes | 1d | 2020-01-24 | 2020-01-24 | 7 |  |  | 3d |  |  | López Sánchez Gustavo Andrés; Flores Altamirano Edgar | 16h |  | 200 |  |
| 9 | 1.1.7 | Comunicación entre componentes | 1d | 2020-01-24 | 2020-01-24 | 7 |  |  | 3d |  |  | López Sánchez Gustavo Andrés; Flores Altamirano Edgar | 16h |  | 200 |  |
| 10 | 1.1.8 | Servicios Http y Ajax en Angular | 1d | 2020-01-24 | 2020-01-24 | 7 |  |  | 2d | 0d |  | López Sánchez Gustavo Andrés; Flores Altamirano Edgar | 16h |  | 200 |  |
| 11 | 1.1.9 | Pipes y formularios | 1d | 2020-01-27 | 2020-01-27 | 10 |  |  | 2d |  |  | López Sánchez Gustavo Andrés; Flores Altamirano Edgar | 16h |  | 200 |  |
| 12 | 1.1.10 | Angular Material UI | 1d | 2020-01-27 | 2020-01-27 | 10 |  |  | 2d |  |  | López Sánchez Gustavo Andrés; Flores Altamirano Edgar | 16h |  | 200 |  |
| 13 | 1.1.11 | Aplicación de prueba Angular 8.0 | 1d | 2020-01-27 | 2020-01-27 | 10 |  |  | 2d |  |  |  |  |  |  |  |
| 14 | 1.2 | **Capacitación en Latex** | 10d | 2020-01-20 A | 2020-01-31 |  | 90% | 1d | 0d |  |  |  | 160h | 144h | 1,200 | 1,200 |
| 15 | 1.2.1 | Sintaxis | 1d | 2020-01-20 A | 2020-01-20 A |  | 100% |  |  |  |  | López Rivera Aiko; Cervantes Moreno Christian Andres | 16h | 16h | 200 | 200 |
| 16 | 1.2.2 | Estructura | 1d | 2020-01-21 A | 2020-01-21 A | 15 | 100% |  |  |  |  | López Rivera Aiko; Cervantes Moreno Christian Andres | 16h | 16h | 200 | 200 |
| 17 | 1.2.3 | Prueba de librerías | 1d | 2020-01-22 A | 2020-01-22 A | 16 | 100% |  |  |  |  | López Rivera Aiko; Cervantes Moreno Christian Andres | 16h | 16h | 200 | 200 |
| 18 | 1.2.4 | Uso de Overleaf | 1d | 2020-01-23 A | 2020-01-23 A | 17 | 100% |  |  |  |  | López Rivera Aiko; Cervantes Moreno Christian Andres | 16h | 16h | 200 | 200 |
| 19 | 1.2.5 | Plantilla latex (Reporte Técnico) | 4d | 2020-01-24 A | 2020-01-29 A | 18 | 100% |  |  |  |  | López Rivera Aiko; Cervantes Moreno Christian Andres | 64h | 64h | 200 | 200 |
| 20 | 1.2.6 | Requerimientos No Funcionales | 2d | 2020-01-30 A | 2020-01-31 | 19 | 50% | 1d | 0d |  |  | López Rivera Aiko; Cervantes Moreno Christian Andres | 32h | 16h | 200 | 200 |
| 21 | 1.3 | **Arquitectura y Metodología** | 2d | 2020-01-28 | 2020-01-29 | 2 |  |  | 2d | 0d |  |  | 64h |  | 400 |  |
| 22 | 1.3.1 | Descripción de arquitecturra y metodologia | 2d | 2020-01-28 | 2020-01-29 |  |  |  | 2d |  |  | López Sánchez Gustavo Andrés; Flores Altamirano Edgar | 32h |  | 200 |  |
| 23 | 1.3.2 | Creacion de Diagrama de arquitectura | 2d | 2020-01-28 | 2020-01-29 |  |  |  | 2d |  |  | Flores Altamirano Edgar; López Sánchez Gustavo Andrés | 32h |  | 200 |  |
| 24 | 1.4 | **Modelo de Negocio** | 3d | 2020-01-30 | 2020-02-03 | 21 |  |  | 53d |  |  |  | 64h |  | 400 |  |
| 25 | 1.4.1 | Identificación de Objetos de Negocio | 1d | 2020-01-30 | 2020-01-30 |  |  |  | 55d |  |  | Flores Altamirano Edgar; López Sánchez Gustavo Andrés | 16h |  | 200 |  |
| 26 | 1.4.2 | Creación de primera versión de Modelo de Negocio | 3d | 2020-01-30 | 2020-02-03 |  |  |  | 53d |  |  | Flores Altamirano Edgar; López Sánchez Gustavo Andrés | 48h |  | 200 |  |

| ID | WBS | Task | Duration | Start | Finish | Predecessors | Total slack | Free slack | Constraint | Resources | Work | Cost |
| --- | --- | --- | --- | --- | --- | --- | --- | --- | --- | --- | --- | --- |
| 27 | 1.5 | **Capacitación en Firebase** | 4d | 2020-01-30 | 2020-02-04 | 21 | 2d | 0d |  |  | 144h | 1,400 |
| 28 | 1.5.1 | Base de Datos no SQL | 1d | 2020-01-30 | 2020-01-30 |  | 2d | 0d |  | López Sánchez Gustavo Andrés; Flores Altamirano Edgar | 16h | 200 |
| 29 | 1.5.2 | Colecciones y Documentos | 1d | 2020-01-30 | 2020-01-30 |  | 2d | 0d |  | López Sánchez Gustavo Andrés; Flores Altamirano Edgar | 16h | 200 |
| 30 | 1.5.3 | Estructura JSON | 2d | 2020-01-31 | 2020-02-03 | 28, 29 | 3d |  |  | López Sánchez Gustavo Andrés; Flores Altamirano Edgar | 32h | 200 |
| 31 | 1.5.4 | Cloud Firestore | 2d | 2020-01-31 | 2020-02-03 | 28, 29 | 2d | 0d |  | López Sánchez Gustavo Andrés; Flores Altamirano Edgar | 32h | 200 |
| 32 | 1.5.5 | Realtime Database | 1d | 2020-02-04 | 2020-02-04 | 31 | 2d |  |  | López Sánchez Gustavo Andrés; Flores Altamirano Edgar | 16h | 200 |
| 33 | 1.5.6 | Reglas de seguridad | 1d | 2020-02-04 | 2020-02-04 | 31 | 2d |  |  | López Sánchez Gustavo Andrés; Flores Altamirano Edgar | 16h | 200 |
| 34 | 1.5.7 | Tipos de autentificación | 1d | 2020-02-04 | 2020-02-04 | 31 | 2d |  |  | López Sánchez Gustavo Andrés; Flores Altamirano Edgar | 16h | 200 |
| 35 | 1.6 | **Integración Firebase y Angular** | 6d | 2020-02-05 | 2020-02-12 | 27 | 2d | 0d |  |  | 192h | 1,400 |
| 36 | 1.6.1 | Prueba de Alta documento con diferentes tipos de datos | 1d | 2020-02-05 | 2020-02-05 |  | 7d |  |  | López Sánchez Gustavo Andrés; Flores Altamirano Edgar | 16h | 200 |
| 37 | 1.6.2 | Lectura de datos individual | 2d | 2020-02-05 | 2020-02-06 |  | 6d |  |  | López Sánchez Gustavo Andrés; Flores Altamirano Edgar | 32h | 200 |
| 38 | 1.6.3 | Lectura de datos por Colecciones | 2d | 2020-02-05 | 2020-02-06 |  | 6d |  |  | López Sánchez Gustavo Andrés; Flores Altamirano Edgar | 32h | 200 |
| 39 | 1.6.4 | Lectura con filtros | 1d | 2020-02-05 | 2020-02-05 |  | 7d |  |  | López Sánchez Gustavo Andrés; Flores Altamirano Edgar | 16h | 200 |
| 40 | 1.6.5 | Funciones Cloud | 2d | 2020-02-05 | 2020-02-06 |  | 2d | 0d | start no earlier than 2020-01-22 | López Sánchez Gustavo Andrés; Flores Altamirano Edgar | 32h | 200 |
| 41 | 1.6.6 | Altas con por lotes | 2d | 2020-02-07 | 2020-02-10 | 40 | 2d | 0d |  | López Sánchez Gustavo Andrés; Flores Altamirano Edgar | 32h | 200 |
| 42 | 1.6.7 | Edición de documentos | 2d | 2020-02-11 | 2020-02-12 | 41 | 2d |  | start no earlier than 2020-02-06 | López Sánchez Gustavo Andrés; Flores Altamirano Edgar | 32h | 200 |
| 43 | 1.7 | **Hosting** | 3d | 2020-02-13 | 2020-02-17 | 35 | 10d | 1d |  |  | 48h | 400 |
| 44 | 1.7.1 | Hosting Firebase | 1d | 2020-02-13 | 2020-02-13 |  | 10d | 0d |  | López Sánchez Gustavo Andrés; Flores Altamirano Edgar | 16h | 200 |
| 45 | 1.7.2 | Pruebas de sitio | 2d | 2020-02-14 | 2020-02-17 | 44 | 10d |  | start no earlier than 2020-02-06 | López Sánchez Gustavo Andrés; Flores Altamirano Edgar | 32h | 200 |
| 46 | 1.8 | **Capacitación Automotización** | 10d | 2020-02-03 | 2020-02-14 | 20 | 44d |  |  |  | 96h | 1,200 |
| 47 | 1.8.1 | Localizando elementos (id, name, xpath, link text, tag name, class name, css selector). | 1d | 2020-02-03 | 2020-02-03 | 2 | 53d |  |  | Cervantes Moreno Christian Andres | 8h | 100 |
| 48 | 1.8.2 | Asserts | 1d | 2020-02-03 | 2020-02-03 | 2 | 44d | 0d |  | Cervantes Moreno Christian Andres | 8h | 100 |
| 49 | 1.8.3 | Unit test | 1d | 2020-02-04 | 2020-02-04 | 48 | 52d |  |  | Cervantes Moreno Christian Andres | 8h | 100 |
| 50 | 1.8.4 | Page Objects | 1d | 2020-02-04 | 2020-02-04 | 48 | 44d | 0d |  | Cervantes Moreno Christian Andres | 8h | 100 |
| 51 | 1.8.5 | Implicit Wait | 1d | 2020-02-05 | 2020-02-05 | 50 | 44d | 0d |  | Cervantes Moreno Christian Andres | 8h | 100 |
| 52 | 1.8.6 | Explicit Wait | 1d | 2020-02-06 | 2020-02-06 | 51 | 44d | 0d |  | Cervantes Moreno Christian Andres | 8h | 100 |
| 53 | 1.8.7 | Click en un toggle o Switch | 1d | 2020-02-07 | 2020-02-07 | 52 | 44d | 0d |  | Cervantes Moreno Christian Andres | 8h | 100 |
| 54 | 1.8.8 | Select con For | 1d | 2020-02-10 | 2020-02-10 | 53 | 44d | 0d |  | Cervantes Moreno Christian Andres | 8h | 100 |
| 55 | 1.8.9 | Subir Archivos | 1d | 2020-02-11 | 2020-02-11 | 54 | 44d | 0d |  | Cervantes Moreno Christian Andres | 8h | 100 |
| 56 | 1.8.10 | Reportes en HTML | 1d | 2020-02-12 | 2020-02-12 | 55 | 44d | 0d |  | Cervantes Moreno Christian Andres | 8h | 100 |
| 57 | 1.8.11 | Omitiendo Casos | 1d | 2020-02-13 | 2020-02-13 | 56 | 44d | 0d |  | Cervantes Moreno Christian Andres | 8h | 100 |
| 58 | 1.8.12 | Configuraciones de Bowrser | 1d | 2020-02-14 | 2020-02-14 | 57 | 44d |  |  | Cervantes Moreno Christian Andres | 8h | 100 |

| ID | WBS | Task | Duration | Start | Finish | Predecessors | Total slack | Free slack | Constraint | Resources | Work | Cost |
| --- | --- | --- | --- | --- | --- | --- | --- | --- | --- | --- | --- | --- |
| 59 | 1.9 | **Ánalisis de Factibilidad** | 10d | 2020-02-03 | 2020-02-14 | 14 | 0d |  |  |  | 80h | 500 |
| 60 | 1.9.1 | Factibilidad Técnica | 2d | 2020-02-03 | 2020-02-04 |  | 0d |  |  | López Rivera Aiko | 16h | 100 |
| 61 | 1.9.2 | Factibilidad Operativa | 1d | 2020-02-05 | 2020-02-05 | 60 | 0d |  |  | López Rivera Aiko | 8h | 100 |
| 62 | 1.9.3 | Factibilidad Económica | 2d | 2020-02-06 | 2020-02-07 | 61 | 0d |  |  | López Rivera Aiko | 16h | 100 |
| 63 | 1.9.4 | Análisis de Costos COCOMO | 4d | 2020-02-10 | 2020-02-13 | 62 | 0d |  |  | López Rivera Aiko | 32h | 100 |
| 64 | 1.9.5 | Análisis de Riegos | 1d | 2020-02-14 | 2020-02-14 | 63 | 0d |  |  | López Rivera Aiko | 8h | 100 |
| 65 | 1.10 | Diagrama de Casos de Uso | 1d | 2020-02-17 | 2020-02-17 | 59 | 0d |  |  | López Rivera Aiko | 8h | 100 |
| 66 | 1.11 | **Sprint Gestión de etapas** | 25d | 2020-02-13 | 2020-03-18 | 35 | 2d | 1d |  |  | 216h | 2,000 |
| 67 | 1.11.1 | Diagrama en BPMN | 1d | 2020-02-13 | 2020-02-13 |  | 2d | 0d |  | Cervantes Moreno Christian Andres | 8h | 100 |
| 68 | 1.11.2 | Descripcion de tareas. | 1d | 2020-02-13 | 2020-02-13 |  | 2d | 0d |  | Cervantes Moreno Christian Andres | 8h | 100 |
| 69 | 1.11.3 | Requerimientos Funcionales | 1d | 2020-02-14 | 2020-02-14 | 67, 68 | 2d | 0d |  | Cervantes Moreno Christian Andres | 8h | 100 |
| 70 | 1.11.4 | Reglas de Negocio | 1d | 2020-02-14 | 2020-02-14 | 67, 68 | 2d | 0d |  | Cervantes Moreno Christian Andres | 8h | 100 |
| 71 | 1.11.5 | Mensajes | 1d | 2020-02-17 | 2020-02-17 | 69, 70 | 2d | 0d |  | Cervantes Moreno Christian Andres | 8h | 100 |
| 72 | 1.11.6 | **Definir Etapas para el sistema de gestión de admisión escolar** | 3d | 2020-02-18 | 2020-02-20 | 71 | 9d |  |  |  | 32h | 300 |
| 73 | 1.11.6.1 | Caso de Uso | 1d | 2020-02-18 | 2020-02-18 | 71 | 9d | 0d |  | Cervantes Moreno Christian Andres | 8h | 100 |
| 74 | 1.11.6.2 | Diagrama de Secuencia | 1d | 2020-02-19 | 2020-02-19 | 73 | 15d |  |  | Flores Altamirano Edgar | 8h | 100 |
| 75 | 1.11.6.3 | Desarrollo | 2d | 2020-02-19 | 2020-02-20 | 43, 73 | 9d | 0d |  | López Sánchez Gustavo Andrés | 16h | 100 |
| 76 | 1.11.7 | **Definir fechas de etapas seleccionadas** | 4d | 2020-02-19 | 2020-02-24 | 73 | 11d | 9d |  |  | 32h | 300 |
| 77 | 1.11.7.1 | Caso de Uso | 1d | 2020-02-19 | 2020-02-19 | 73 | 13d | 0d | start no earlier than 2020-02-19 | Cervantes Moreno Christian Andres | 8h | 100 |
| 78 | 1.11.7.2 | Diagrama de Secuencia | 1d | 2020-02-20 | 2020-02-20 | 77 | 13d | 0d |  | Flores Altamirano Edgar | 8h | 100 |
| 79 | 1.11.7.3 | Desarrollo | 2d | 2020-02-21 | 2020-02-24 | 75 | 9d | 0d |  | López Sánchez Gustavo Andrés | 16h | 100 |
| 80 | 1.11.8 | **Indice de Gestion de Etapas** | 8d | 2020-02-18 | 2020-02-27 | 71 | 2d |  |  |  | 40h | 300 |
| 81 | 1.11.8.1 | Caso de Uso | 1d | 2020-02-18 | 2020-02-18 | 71 | 2d | 0d |  | Cervantes Moreno Christian Andres | 8h | 100 |
| 82 | 1.11.8.2 | Diagrama de Secuencia | 1d | 2020-02-21 | 2020-02-21 | 81, 78 | 13d |  |  | Flores Altamirano Edgar | 8h | 100 |
| 83 | 1.11.8.3 | Desarrollo | 3d | 2020-02-25 | 2020-02-27 | 79 | 9d | 0d |  | López Sánchez Gustavo Andrés | 24h | 100 |
| 84 | 1.11.9 | Pantallas Modulo de Gestión de Etapas | 1d | 2020-03-09 | 2020-03-09 | 72, 76, 80, 79 | 3d | 0d | start no earlier than 2020-03-09 | Cervantes Moreno Christian Andres | 8h | 100 |
| 85 | 1.11.10 | Revisión de CU con Desarrollo. | 2d | 2020-03-10 | 2020-03-11 | 84 | 3d | 0d |  | Cervantes Moreno Christian Andres; López Sánchez Gustavo Andrés | 32h | 200 |
| 86 | 1.11.11 | Corrección casos de uso | 1d | 2020-03-12 | 2020-03-12 | 85 | 3d | 0d |  | Cervantes Moreno Christian Andres | 8h | 100 |
| 87 | 1.11.12 | Reportar Incidencias del desarrollo | 1d | 2020-03-13 | 2020-03-13 | 86 | 3d | 0d |  | Cervantes Moreno Christian Andres | 8h | 100 |
| 88 | 1.11.13 | Solucionar Incidencias del desarrollo | 2d | 2020-03-16 | 2020-03-17 | 87 | 3d | 0d |  | López Sánchez Gustavo Andrés | 16h | 100 |
| 89 | 1.11.14 | Revisión Final Módulo | 1d | 2020-03-18 | 2020-03-18 | 88 | 3d |  |  |  |  |  |

| ID | WBS | Task | Duration | Start | Finish | Predecessors | Total slack | Free slack | Resources | Work | Cost |
| --- | --- | --- | --- | --- | --- | --- | --- | --- | --- | --- | --- |
| 90 | 1.12 | **Sprint Gestión de landingpage** | 24d | 2020-03-10 | 2020-04-10 | 180 | 0d |  |  | 208h | 2,100 |
| 91 | 1.12.1 | Diagrama en BPN | 1d | 2020-03-10 | 2020-03-10 |  | 0d |  | López Rivera Aiko | 8h | 100 |
| 92 | 1.12.2 | Descripcion de tareas. | 1d | 2020-03-10 | 2020-03-10 |  | 0d |  | López Rivera Aiko | 8h | 100 |
| 93 | 1.12.3 | Requerimientos Funcionales | 1d | 2020-03-11 | 2020-03-11 | 91, 92 | 0d |  | López Rivera Aiko | 8h | 100 |
| 94 | 1.12.4 | Reglas de Negocio | 1d | 2020-03-11 | 2020-03-11 | 91, 92 | 0d |  | López Rivera Aiko | 8h | 100 |
| 95 | 1.12.5 | Mensajes | 1d | 2020-03-12 | 2020-03-12 | 93, 94 | 0d |  | López Rivera Aiko | 8h | 100 |
| 96 | 1.12.6 | **Registro de aspirante Google o Correo y Contraseña** | 21d | 2020-03-13 | 2020-04-10 |  | 0d |  |  | 32h | 300 |
| 97 | 1.12.6.1 | Caso de Uso | 1d | 2020-03-13 | 2020-03-13 | 95 | 0d |  | López Rivera Aiko | 8h | 100 |
| 98 | 1.12.6.2 | Diagrama de Secuencia | 1d | 2020-03-16 | 2020-03-16 | 97 | 21d | 17d | Flores Altamirano Edgar | 8h | 100 |
| 99 | 1.12.6.3 | Desarrollo | 2d | 2020-04-09 | 2020-04-10 | 98, 189 | 4d |  | López Sánchez Gustavo Andrés | 16h | 100 |
| 100 | 1.12.7 | **Inicio de Sesión Administrador(s) o Aspirantes** | 2d | 2020-03-16 | 2020-03-17 | 97 | 0d |  |  | 32h | 300 |
| 101 | 1.12.7.1 | Caso de Uso | 1d | 2020-03-16 | 2020-03-16 |  | 1d |  | López Rivera Aiko | 8h | 100 |
| 102 | 1.12.7.2 | Diagrama de Secuencia | 1d | 2020-03-16 | 2020-03-16 |  | 1d |  | Flores Altamirano Edgar | 8h | 100 |
| 103 | 1.12.7.3 | Desarrollo | 2d | 2020-03-16 | 2020-03-17 |  | 0d |  | López Sánchez Gustavo Andrés | 16h | 100 |
| 104 | 1.12.8 | **LandingPage (Calendario)** | 3d | 2020-03-18 | 2020-03-20 | 100 | 0d |  |  | 40h | 300 |
| 105 | 1.12.8.1 | Caso de Uso | 1d | 2020-03-18 | 2020-03-18 |  | 21d |  | López Rivera Aiko | 8h | 100 |
| 106 | 1.12.8.2 | Diagrama de Secuencia | 1d | 2020-03-18 | 2020-03-18 |  | 21d |  | Flores Altamirano Edgar | 8h | 100 |
| 107 | 1.12.8.3 | Desarrollo | 3d | 2020-03-18 | 2020-03-20 |  | 0d |  | López Sánchez Gustavo Andrés | 24h | 100 |
| 108 | 1.12.9 | Pantallas del Modulo | 1d | 2020-03-23 | 2020-03-23 | 107 | 0d |  | López Rivera Aiko | 8h | 100 |
| 109 | 1.12.10 | Revisión de CU con Desarrollo. | 1d | 2020-03-24 | 2020-03-24 | 108 | 0d |  | López Rivera Aiko | 8h | 100 |
| 110 | 1.12.11 | Corrección casos de uso | 1d | 2020-03-25 | 2020-03-25 | 109 | 0d |  | López Rivera Aiko | 8h | 100 |
| 111 | 1.12.12 | Reportar Incidencias del desarrollo | 1d | 2020-03-26 | 2020-03-26 | 110 | 15d |  | López Rivera Aiko | 8h | 100 |
| 112 | 1.12.13 | Solucionar Incidencias del desarrollo | 2d | 2020-03-26 | 2020-03-27 | 110 | 0d |  | López Sánchez Gustavo Andrés | 16h | 100 |
| 113 | 1.12.14 | Revisión Final Módulo | 1d | 2020-03-30 | 2020-03-30 | 112 | 0d |  | López Rivera Aiko; López Sánchez Gustavo Andrés | 16h | 200 |

| ID | WBS | Task | Duration | Start | Finish | Predecessors | Total slack | Free slack | Constraint | Resources | Work | Cost |
| --- | --- | --- | --- | --- | --- | --- | --- | --- | --- | --- | --- | --- |
| 114 | 1.13 | **Sprint de Gestión de Usuarios** | 18d | 2020-02-19 | 2020-03-13 | 81 | 2d |  |  |  | 296h | 3,200 |
| 115 | 1.13.1 | Diagrama en BPMN | 1d | 2020-02-19 | 2020-02-19 | 81 | 29d |  |  | Cervantes Moreno Christian Andres | 8h | 100 |
| 116 | 1.13.2 | Descripción de Tareas | 1d | 2020-02-19 | 2020-02-19 | 81 | 2d | 0d |  | Cervantes Moreno Christian Andres | 8h | 100 |
| 117 | 1.13.3 | Requerimiento Funcionales | 1d | 2020-02-20 | 2020-02-20 | 116 | 2d | 0d |  | Cervantes Moreno Christian Andres | 8h | 100 |
| 118 | 1.13.4 | Mensajes | 1d | 2020-02-21 | 2020-02-21 | 117 | 2d | 0d |  | Cervantes Moreno Christian Andres | 8h | 100 |
| 119 | 1.13.5 | **Indice de Gestión de Usuarios** | 2d | 2020-02-24 | 2020-02-25 | 118 | 2d |  |  |  | 24h | 300 |
| 120 | 1.13.5.1 | Caso de Uso | 1d | 2020-02-24 | 2020-02-24 | 118 | 2d | 0d |  | Cervantes Moreno Christian Andres | 8h | 100 |
| 121 | 1.13.5.2 | Diagrama de Secuencia | 1d | 2020-02-25 | 2020-02-25 | 120 | 25d |  | start no earlier than 2020-02-17 | Flores Altamirano Edgar | 8h | 100 |
| 122 | 1.13.5.3 | Desarrollo | 1d | 2020-02-25 | 2020-02-25 | 120 | 25d |  | start no earlier than 2020-02-17 | Flores Altamirano Edgar | 8h | 100 |
| 123 | 1.13.6 | **Visualizar Administrador** | 2d | 2020-02-24 | 2020-02-25 | 118 | 3d |  |  |  | 24h | 300 |
| 124 | 1.13.6.1 | Caso de Uso | 1d | 2020-02-24 | 2020-02-24 | 118 | 26d |  |  | Cervantes Moreno Christian Andres | 8h | 100 |
| 125 | 1.13.6.2 | Diagrama de Secuencia | 1d | 2020-02-24 | 2020-02-24 | 81, 118 | 26d |  | start no earlier than 2020-02-20 | Flores Altamirano Edgar | 8h | 100 |
| 126 | 1.13.6.3 | Desarrollo | 1d | 2020-02-25 | 2020-02-25 | 120 | 2d | 0d | start no earlier than 2020-02-20 | Flores Altamirano Edgar | 8h | 100 |
| 127 | 1.13.7 | **Dar de Alta Administrador** | 4d | 2020-02-24 | 2020-02-27 | 118 | 3d |  |  |  | 32h | 300 |
| 128 | 1.13.7.1 | Caso de Uso | 1d | 2020-02-24 | 2020-02-24 | 118 | 3d | 0d |  | Cervantes Moreno Christian Andres | 8h | 100 |
| 129 | 1.13.7.2 | Diagrama de Secuencia | 1d | 2020-02-26 | 2020-02-26 | 128, 126 | 24d |  | start no earlier than 2020-02-24 | Flores Altamirano Edgar | 8h | 100 |
| 130 | 1.13.7.3 | Desarrollo | 2d | 2020-02-26 | 2020-02-27 | 128, 126 | 2d | 0d | start no earlier than 2020-02-24 | Flores Altamirano Edgar | 16h | 100 |
| 131 | 1.13.8 | **Editar Administrador** | 5d | 2020-02-25 | 2020-03-02 | 128 | 4d |  |  |  | 32h | 300 |
| 132 | 1.13.8.1 | Caso de Uso | 1d | 2020-02-25 | 2020-02-25 | 128 | 4d | 2d |  | Cervantes Moreno Christian Andres | 8h | 100 |
| 133 | 1.13.8.2 | Diagrama de Secuencia | 1d | 2020-02-28 | 2020-02-28 | 132, 130 | 22d |  | start no earlier than 2020-02-26 | Flores Altamirano Edgar | 8h | 100 |
| 134 | 1.13.8.3 | Desarrollo | 2d | 2020-02-28 | 2020-03-02 | 132, 130 | 2d | 0d | start no earlier than 2020-02-26 | Flores Altamirano Edgar | 16h | 100 |
| 135 | 1.13.9 | **Visualizar Aspirante** | 2d | 2020-03-02 | 2020-03-03 | 128 | 2d |  |  |  | 24h | 300 |
| 136 | 1.13.9.1 | Caso de Uso | 1d | 2020-03-02 | 2020-03-02 | 128 | 2d | 0d | start no earlier than 2020-03-02 | Cervantes Moreno Christian Andres | 8h | 100 |
| 137 | 1.13.9.2 | Diagrama de Secuencia | 1d | 2020-03-03 | 2020-03-03 | 136, 134 | 20d |  | start no earlier than 2020-02-28 | Flores Altamirano Edgar | 8h | 100 |
| 138 | 1.13.9.3 | Desarrollo | 1d | 2020-03-03 | 2020-03-03 | 136, 134 | 2d | 0d | start no earlier than 2020-02-28 | Flores Altamirano Edgar | 8h | 100 |

| ID | WBS | Task | Duration | Start | Finish | Predecessors | Total slack | Free slack | Constraint | Resources | Work | Cost |
| --- | --- | --- | --- | --- | --- | --- | --- | --- | --- | --- | --- | --- |
| 139 | 1.13.10 | **Editar Aspirante** | 3d | 2020-03-03 | 2020-03-05 | 136 | 2d |  |  |  | 32h | 300 |
| 140 | 1.13.10.1 | Caso de Uso | 1d | 2020-03-03 | 2020-03-03 | 136 | 2d | 0d |  | Cervantes Moreno Christian Andres | 8h | 100 |
| 141 | 1.13.10.2 | Diagrama de Secuencia | 1d | 2020-03-04 | 2020-03-04 | 140, 138 | 19d |  | start no earlier than 2020-03-02 | Flores Altamirano Edgar | 8h | 100 |
| 142 | 1.13.10.3 | Desarrollo | 2d | 2020-03-04 | 2020-03-05 | 140, 138 | 2d | 0d | start no earlier than 2020-03-02 | Flores Altamirano Edgar | 16h | 100 |
| 143 | 1.13.11 | **Aprobar Permisos Administrador** | 5d | 2020-03-03 | 2020-03-09 | 136 | 4d |  |  |  | 32h | 300 |
| 144 | 1.13.11.1 | Caso de Uso | 1d | 2020-03-03 | 2020-03-03 | 136 | 4d | 2d |  | Cervantes Moreno Christian Andres | 8h | 100 |
| 145 | 1.13.11.2 | Diagrama de Secuencia | 1d | 2020-03-06 | 2020-03-06 | 144, 142 | 17d |  | start no earlier than 2020-03-05 | Flores Altamirano Edgar | 8h | 100 |
| 146 | 1.13.11.3 | Desarrollo | 2d | 2020-03-06 | 2020-03-09 | 144, 142 | 2d | 0d | start no earlier than 2020-03-05 | Flores Altamirano Edgar | 16h | 100 |
| 147 | 1.13.12 | Pantallas del Módulo | 2d | 2020-03-10 | 2020-03-11 | 146 | 14d |  | start no earlier than 2020-02-18 | Cervantes Moreno Christian Andres | 16h | 100 |
| 148 | 1.13.13 | Revisión de CU con Desarrollo | 1d | 2020-03-10 | 2020-03-10 | 146 | 2d | 0d |  | Flores Altamirano Edgar; Cervantes Moreno Christian Andres | 16h | 200 |
| 149 | 1.13.14 | Corrección Casos de Uso | 1d | 2020-03-11 | 2020-03-11 | 148 | 2d | 0d | start no earlier than 2020-02-28 | Cervantes Moreno Christian Andres | 8h | 100 |
| 150 | 1.13.15 | Reportar Inicdencias del Desarrollo | 1d | 2020-03-12 | 2020-03-12 | 149 | 12d | 0d | finish no earlier than 2020-02-28 | Cervantes Moreno Christian Andres | 8h | 100 |
| 151 | 1.13.16 | Solucionar Incidencias del Desarrollo | 1d | 2020-03-12 | 2020-03-12 | 149 | 2d | 0d |  | Flores Altamirano Edgar | 8h | 100 |
| 152 | 1.13.17 | Revisión Final Módulo | 1d | 2020-03-13 | 2020-03-13 | 150 | 12d |  |  | Cervantes Moreno Christian Andres | 8h | 100 |
| 153 | 1.14 | **Sprint de Gestión de Documentación** | 37d | 2020-02-18 | 2020-04-08 | 65 | 0d |  |  |  | 432h | 3,200 |
| 154 | 1.14.1 | Diagrama BPMN | 2d | 2020-02-18 | 2020-02-19 |  | 0d |  |  | López Rivera Aiko | 16h | 100 |
| 155 | 1.14.2 | Descripción de Tareas | 1d | 2020-02-20 | 2020-02-20 | 154 | 0d |  |  | López Rivera Aiko | 8h | 100 |
| 156 | 1.14.3 | Requerimientos Funcionales | 2d | 2020-02-21 | 2020-02-24 | 155 | 0d |  |  | López Rivera Aiko | 16h | 100 |
| 157 | 1.14.4 | Reglas de Negocio | 1d | 2020-02-25 | 2020-02-25 | 156 | 0d |  |  | López Rivera Aiko | 8h | 100 |
| 158 | 1.14.5 | Mensajes | 1d | 2020-02-26 | 2020-02-26 | 157 | 0d |  |  | López Rivera Aiko | 8h | 100 |
| 159 | 1.14.6 | **Indice de Gestión de Documentación** | 3d | 2020-02-27 | 2020-03-02 | 158 | 0d |  |  |  | 32h | 300 |
| 160 | 1.14.6.1 | Caso de Uso | 1d | 2020-02-27 | 2020-02-27 | 158 | 0d |  |  | López Rivera Aiko | 8h | 100 |
| 161 | 1.14.6.2 | Dagrama de Secuencía | 1d | 2020-02-28 | 2020-02-28 | 160, 83 | 28d |  |  | Flores Altamirano Edgar | 8h | 100 |
| 162 | 1.14.6.3 | Desarrollo | 2d | 2020-02-28 | 2020-03-02 | 160, 83 | 9d | 0d |  | López Sánchez Gustavo Andrés | 16h | 100 |

| ID | WBS | Task | Duration | Start | Finish | Predecessors | Total slack | Free slack | Constraint | Resources | Work | Cost |
| --- | --- | --- | --- | --- | --- | --- | --- | --- | --- | --- | --- | --- |
| 163 | 1.14.7 | **Registrar requisitos para Documentación** | 6d | 2020-02-28 | 2020-03-06 |  | 0d |  |  |  | 56h | 300 |
| 164 | 1.14.7.1 | Caso de Uso | 2d | 2020-02-28 | 2020-03-02 | 160 | 0d |  |  | López Rivera Aiko | 16h | 100 |
| 165 | 1.14.7.2 | Diagrama de Secuencía | 1d | 2020-03-03 | 2020-03-03 | 164 | 26d |  |  | Flores Altamirano Edgar | 8h | 100 |
| 166 | 1.14.7.3 | Desarrollo | 4d | 2020-03-03 | 2020-03-06 | 162, 164 | 9d | 0d | start no earlier than 2020-03-03 | López Sánchez Gustavo Andrés | 32h | 100 |
| 167 | 1.14.8 | **Ordenar Requisitos para Documentación** | 6d | 2020-03-03 | 2020-03-10 |  | 0d |  |  |  | 32h | 300 |
| 168 | 1.14.8.1 | Caso de Uso | 1d | 2020-03-03 | 2020-03-03 | 164 | 0d |  |  | López Rivera Aiko | 8h | 100 |
| 169 | 1.14.8.2 | Diagrama de Secuencía | 1d | 2020-03-04 | 2020-03-04 | 168 | 25d |  |  | Flores Altamirano Edgar | 8h | 100 |
| 170 | 1.14.8.3 | Desarrollo | 2d | 2020-03-09 | 2020-03-10 | 166 | 9d | 0d |  | López Sánchez Gustavo Andrés | 16h | 100 |
| 171 | 1.14.9 | **Editar requisitos para Documentación** | 7d | 2020-03-04 | 2020-03-12 |  | 0d |  |  |  | 32h | 300 |
| 172 | 1.14.9.1 | Caso de Uso | 1d | 2020-03-04 | 2020-03-04 | 168 | 0d |  |  | López Rivera Aiko | 8h | 100 |
| 173 | 1.14.9.2 | Diagrama de Secuencía | 1d | 2020-03-05 | 2020-03-05 | 172 | 24d |  |  | Flores Altamirano Edgar | 8h | 100 |
| 174 | 1.14.9.3 | Desarrollo | 2d | 2020-03-11 | 2020-03-12 | 170 | 9d | 0d |  | López Sánchez Gustavo Andrés | 16h | 100 |
| 175 | 1.14.10 | **Validar Requisitos para Documentación** | 9d | 2020-03-05 | 2020-03-17 |  | 0d |  |  |  | 48h | 300 |
| 176 | 1.14.10.1 | Caso de Uso | 2d | 2020-03-05 | 2020-03-06 | 172 | 0d |  |  | López Rivera Aiko | 16h | 100 |
| 177 | 1.14.10.2 | Diagrama de Secuencía | 1d | 2020-03-09 | 2020-03-09 | 176 | 22d |  |  | Flores Altamirano Edgar | 8h | 100 |
| 178 | 1.14.10.3 | Desarrollo | 3d | 2020-03-13 | 2020-03-17 | 174 | 9d | 0d |  | López Sánchez Gustavo Andrés | 24h | 100 |
| 179 | 1.14.11 | **Subir requisitos para Documentación** | 11d | 2020-03-09 | 2020-03-23 |  | 0d |  |  |  | 48h | 300 |
| 180 | 1.14.11.1 | Caso de Uso | 1d | 2020-03-09 | 2020-03-09 | 176 | 0d |  |  | López Rivera Aiko | 8h | 100 |
| 181 | 1.14.11.2 | Diagrama de Secuencía | 1d | 2020-03-10 | 2020-03-10 | 180 | 21d |  |  | Flores Altamirano Edgar | 8h | 100 |
| 182 | 1.14.11.3 | Desarrollo | 4d | 2020-03-18 | 2020-03-23 | 178 | 9d | 0d |  | López Sánchez Gustavo Andrés | 32h | 100 |
| 183 | 1.14.12 | Pantallas del Modulo | 1d | 2020-03-31 | 2020-03-31 | 113 | 0d |  |  | López Rivera Aiko | 8h | 100 |
| 184 | 1.14.13 | Integración de Modulos de Documentación | 3d | 2020-03-24 | 2020-03-26 | 182 | 9d |  |  | López Sánchez Gustavo Andrés | 24h | 100 |
| 185 | 1.14.14 | Revisión de CU con Desarrollo. | 2d | 2020-04-01 | 2020-04-02 | 183 | 0d |  |  | López Rivera Aiko; López Sánchez Gustavo Andrés | 32h | 200 |
| 186 | 1.14.15 | Corrección casos de uso | 1d | 2020-04-03 | 2020-04-03 | 185 | 1d | 0d |  | López Rivera Aiko | 8h | 100 |
| 187 | 1.14.16 | Reportar Incidencias del desarrollo | 2d | 2020-04-06 | 2020-04-07 | 186 | 1d |  |  | López Rivera Aiko | 16h | 100 |
| 188 | 1.14.17 | Solucionar Incidencias del desarrollo | 3d | 2020-04-03 | 2020-04-07 | 185 | 0d |  |  | López Sánchez Gustavo Andrés | 24h | 100 |
| 189 | 1.14.18 | Revisión Final Módulo | 1d | 2020-04-08 | 2020-04-08 | 188 | 0d |  |  | López Rivera Aiko; López Sánchez Gustavo Andrés | 16h | 200 |

| ID | WBS | Task | Duration | Start | Finish | Predecessors | Total slack | Free slack | Resources | Work | Cost |
| --- | --- | --- | --- | --- | --- | --- | --- | --- | --- | --- | --- |
| 190 | 1.15 | **Capacitación Software de Pruebas de Rendimiento** | 5d | 2020-03-13 | 2020-03-19 | 151 | 2d |  | Flores Altamirano Edgar | 88h | 600 |
| 191 | 1.15.1 | Teoria pruebas de rendimiento | 1d | 2020-03-13 | 2020-03-13 |  | 24d |  | Flores Altamirano Edgar | 8h | 100 |
| 192 | 1.15.2 | Clasifición de pruebas | 1d | 2020-03-13 | 2020-03-13 |  | 2d | 0d | Flores Altamirano Edgar | 8h | 100 |
| 193 | 1.15.3 | Componentes para plan de pruebas | 1d | 2020-03-16 | 2020-03-16 | 192 | 2d | 0d | Flores Altamirano Edgar | 8h | 100 |
| 194 | 1.15.4 | Reportes | 1d | 2020-03-17 | 2020-03-17 | 193 | 2d | 0d | Flores Altamirano Edgar | 8h | 100 |
| 195 | 1.15.5 | Pruebas con blazedemo | 2d | 2020-03-18 | 2020-03-19 | 194 | 2d | 0d | Flores Altamirano Edgar | 16h | 100 |
| 196 | 1.16 | **Pruebas de Rendimiento Gestión de Etapas** | 6d | 2020-03-20 | 2020-03-27 | 195, 66 | 2d | 0d | Flores Altamirano Edgar | 96h | 400 |
| 197 | 1.16.1 | Programación de pruebas por cada CU | 4d | 2020-03-20 | 2020-03-25 |  | 2d | 0d | Flores Altamirano Edgar | 32h | 100 |
| 198 | 1.16.2 | Reporte de incidencias de Pruebas | 1d | 2020-03-26 | 2020-03-26 | 197 | 2d | 0d | Flores Altamirano Edgar | 8h | 100 |
| 199 | 1.16.3 | Resultados | 1d | 2020-03-27 | 2020-03-27 | 198 | 2d |  | Flores Altamirano Edgar | 8h | 100 |
| 200 | 1.17 | **Pruebas de Rendimiento Gestión de Usuarios** | 6d | 2020-03-30 | 2020-04-06 | 196, 114 | 2d |  | Flores Altamirano Edgar | 96h | 400 |
| 201 | 1.17.1 | Programación de pruebas por cada CU | 4d | 2020-03-30 | 2020-04-02 |  | 2d | 0d | Flores Altamirano Edgar | 32h | 100 |
| 202 | 1.17.2 | Reporte de incidencias de Pruebas | 1d | 2020-04-03 | 2020-04-03 | 201 | 2d | 0d | Flores Altamirano Edgar | 8h | 100 |
| 203 | 1.17.3 | Resultados | 1d | 2020-04-06 | 2020-04-06 | 202 | 2d |  | Flores Altamirano Edgar | 8h | 100 |
| 204 | 1.18 | **Pruebas de Rendimiento Documentación** | 6d | 2020-04-09 | 2020-04-16 | 200, 153 | 0d |  | Flores Altamirano Edgar | 96h | 400 |
| 205 | 1.18.1 | Programación de pruebas por cada CU | 4d | 2020-04-09 | 2020-04-14 |  | 0d |  | Flores Altamirano Edgar | 32h | 100 |
| 206 | 1.18.2 | Reporte de incidencias de Pruebas | 1d | 2020-04-15 | 2020-04-15 | 205 | 0d |  | Flores Altamirano Edgar | 8h | 100 |
| 207 | 1.18.3 | Resultados | 1d | 2020-04-16 | 2020-04-16 | 206 | 0d |  | Flores Altamirano Edgar | 8h | 100 |
